# Fine Tuning Tasks_Start

Schedule from MS Project, 2025-10-09 to 2026-01-22, costs in ₫.

## Calendars

- Standard: Mon-Fri 08:00-12:00, 13:00-17:00; Sat-Sun off.

## Resources

| Resource | Rate | Cost per use |
| --- | --- | --- |
| Nguyễn Thành Việt | 80000 | 80000 |
| Lê Công Đạt | 70000 | 70000 |
| Lý Chí Chương | 65000 | 65000 |
| Server thuê |  |  |
| Domain + Hosting |  |  |

## Schedule

| ID | WBS | Task | Duration | Start | Finish | Predecessors | Baseline start | Baseline finish | Baseline duration | Total slack | Free slack | Constraint | Resources | Work | Cost | Baseline cost |
| --- | --- | --- | --- | --- | --- | --- | --- | --- | --- | --- | --- | --- | --- | --- | --- | --- |
| 1 | 1 | **Xây dựng website bán đồ ăn nhanh** | 76d | 2025-10-09 | 2026-01-22 |  | 2025-10-09 | 2026-01-26 | 78d | 0d |  |  |  | 1112h | 96,945,000 | 99,345,000 |
| 2 | 1.1 | Phân tích yêu cầu | 5d | 2025-10-09 | 2025-10-15 |  | 2025-10-09 | 2025-10-15 | 5d | 0d |  |  | Nguyễn Thành Việt | 40h | 3,280,000 | 3,280,000 |
| 3 | 1.2 | Thiết kế giao diện người dùng | 10d | 2025-10-16 | 2025-10-29 | 2 | 2025-10-16 | 2025-10-29 | 10d | 61d |  |  | Lý Chí Chương | 80h | 5,265,000 | 5,265,000 |
| 4 | 1.3 | Thiết kế cơ sở dữ liệu | 8d | 2025-10-16 | 2025-10-27 | 2 | 2025-10-16 | 2025-10-27 | 8d | 0d |  |  | Lê Công Đạt | 64h | 4,550,000 | 4,550,000 |
| 5 | 1.4 | Lập trình backend | 18d | 2025-12-02 | 2025-12-25 |  | 2025-12-02 | 2025-12-29 | 20d | 20d |  | finish no earlier than 2025-12-25 | Lê Công Đạt; Nguyễn Thành Việt | 288h | 21,750,000 | 24,150,000 |
| 6 | 1.5 | Lập trình frontend | 43d | 2025-10-30 | 2026-01-22 | 4 | 2025-10-30 | 2026-01-26 | 43d | 0d |  |  | Nguyễn Thành Việt; Lê Công Đạt | 480h | 36,950,000 | 36,950,000 |
| 7 | 1.6 | Kiểm thử hệ thống | 18d | 2025-10-09 | 2025-11-03 |  | 2025-10-09 | 2025-11-03 | 18d | 53d | 0d |  | Nguyễn Thành Việt; Lê Công Đạt | 160h | 12,150,000 | 12,150,000 |
| 8 | 1.7 | Triển khai và báo cáo | 5d | 2025-11-04 | 2025-11-10 | 7 | 2025-11-04 | 2025-11-10 | 5d | 53d |  |  | Server thuê [0.1%]; Domain + Hosting [0.1%] |  | 13,000,000 | 13,000,000 |
